# Flat Renting

Schedule from MS Project, 2024-07-01 to 2025-05-09, costs in $, A marks actual dates.

## Calendars

- Standard: Mon-Fri 08:00-12:00, 13:00-17:00; Sat-Sun off.

## Resources

| Resource | Rate |
| --- | --- |
| Zahid | 3 |
| Sadman | 3 |
| TAWHID | 2 |
| AUTHOY | 2.4 |
| Shakib | 2 |

## Schedule

| ID | WBS | Task | Duration | Start | Finish | Predecessors | Complete | Remaining | Total slack | Free slack | Constraint | Resources | Work | Actual work | Cost | Actual cost | Risk Level |
| --- | --- | --- | --- | --- | --- | --- | --- | --- | --- | --- | --- | --- | --- | --- | --- | --- | --- |
| 1 | 1 | **Project Planning** | 16d | 2024-07-01 A | 2024-07-21 |  | 40% | 9.6d |  |  |  | Zahid; TAWHID; AUTHOY; Sadman; Shakib | 984h | 232h | 2,481.6 | 601.6 | Low |
| 2 | 1.1 | **Define Project Scope** | 3d | 2024-07-01 A | 2024-07-03 |  | 99% | 0d |  |  |  | Zahid | 48h | 24h | 144 | 72 | High |
| 3 | 1.1.1 | Identify Project Objectives | 1d | 2024-07-01 A | 2024-07-01 A |  | 100% |  |  |  | finish no earlier than 2024-07-01 | Zahid | 8h | 8h | 24 | 24 | Medium |
| 4 | 1.1.2 | Determine Project Deliverables | 1d | 2024-07-02 A | 2024-07-02 A | 3 | 100% |  |  |  |  | Zahid | 8h | 8h | 24 | 24 | Medium |
| 5 | 1.1.3 | Set Project Boundaries | 1d | 2024-07-03 A | 2024-07-03 A | 4 | 100% |  |  |  |  | Zahid | 8h | 8h | 24 | 24 | Medium |
| 6 | 1.2 | **Stakeholder Analysis** | 3d | 2024-07-04 A | 2024-07-08 |  | 83% | 0.5d |  |  |  | TAWHID; Sadman | 80h | 28h | 192 | 64 | Low |
| 7 | 1.2.1 | Identify Stakeholders | 1d | 2024-07-04 A | 2024-07-04 A |  | 100% |  |  |  |  | TAWHID | 8h | 8h | 16 | 16 | High |
| 8 | 1.2.2 | Analyze Stakeholder Needs | 1d | 2024-07-05 A | 2024-07-05 A | 7 | 100% |  |  |  |  | TAWHID; Sadman | 16h | 16h | 40 | 40 | Low |
| 9 | 1.2.3 | Stakeholder Communication Plan | 1d | 2024-07-08 A | 2024-07-08 | 8 | 50% | 0.5d | 219d |  |  | TAWHID | 8h | 4h | 16 | 8 | High |
| 10 | 1.3 | **Requirements Gathering** | 5d | 2024-07-08 A | 2024-07-12 |  | 10% | 4.5d |  |  |  | TAWHID; AUTHOY | 120h | 4h | 262.4 | 8 | Low |
| 11 | 1.3.1 | Perform Surveys and Questionnaires | 1d | 2024-07-08 A | 2024-07-08 |  | 50% | 0.5d | 215d | 0d |  | TAWHID | 8h | 4h | 16 | 8 | High |
| 12 | 1.3.2 | Organize Focus Groups | 1d | 2024-07-09 | 2024-07-09 | 11 |  |  | 215d | 0d |  | AUTHOY | 8h |  | 19.2 |  | Medium |
| 13 | 1.3.3 | Document Functional Requirements | 1d | 2024-07-10 | 2024-07-10 | 12 |  |  | 215d | 0d |  | TAWHID | 8h |  | 16 |  | Medium |
| 14 | 1.3.4 | Document Non-Functional Requirements | 1d | 2024-07-11 | 2024-07-11 | 13 |  |  | 215d | 0d |  | AUTHOY | 8h |  | 19.2 |  | Medium |
| 15 | 1.3.5 | Validate Requirements with Stakeholders | 1d | 2024-07-12 | 2024-07-12 | 14 |  |  | 215d |  |  | TAWHID | 8h |  | 16 |  | Low |
| 16 | 1.4 | **Project Plan Documentation** | 4d | 2024-07-12 | 2024-07-17 |  |  |  |  |  |  | Sadman; Zahid | 104h |  | 312 |  | High |
| 17 | 1.4.1 | Create Project Schedule | 1d | 2024-07-12 | 2024-07-12 |  |  |  | 212d | 0d |  | Zahid | 8h |  | 24 |  | Low |
| 18 | 1.4.2 | Define Milestones | 1d | 2024-07-15 | 2024-07-15 | 17 |  |  | 212d | 0d |  | Sadman | 8h |  | 24 |  | High |
| 19 | 1.4.3 | Risk Management Plan | 1d | 2024-07-16 | 2024-07-16 | 18 |  |  | 212d | 0d |  | Zahid | 8h |  | 24 |  | Low |
| 20 | 1.4.4 | Communication Plan | 1d | 2024-07-17 | 2024-07-17 | 19 |  |  | 212d |  |  | Sadman; Zahid | 16h |  | 48 |  | High |
| 21 | 2 | **Market Research** | 10d | 2024-07-22 | 2024-08-02 |  |  |  |  |  |  | TAWHID; AUTHOY; Sadman; Zahid | 560h |  | 1,440 |  | Medium |
| 22 | 2.1 | **Competitor Analysis** | 3d | 2024-07-22 | 2024-07-24 |  |  |  |  |  |  | Zahid; TAWHID | 72h |  | 184 |  | Medium |
| 23 | 2.1.1 | Identify Competitors | 1d | 2024-07-22 | 2024-07-22 |  |  |  | 207d | 0d |  | Zahid | 8h |  | 24 |  | Medium |
| 24 | 2.1.2 | Analyze Competitor Features | 1d | 2024-07-23 | 2024-07-23 | 23 |  |  | 207d | 0d |  | TAWHID | 8h |  | 16 |  | Low |
| 25 | 2.1.3 | Strengths and Weaknesses | 1d | 2024-07-24 | 2024-07-24 | 24 |  |  | 207d |  |  | Zahid | 8h |  | 24 |  | High |

| ID | WBS | Task | Duration | Start | Finish | Predecessors | Total slack | Free slack | Constraint | Resources | Work | Cost | Risk Level |
| --- | --- | --- | --- | --- | --- | --- | --- | --- | --- | --- | --- | --- | --- |
| 26 | 2.2 | **User Needs Assessment** | 3d | 2024-07-25 | 2024-07-29 |  |  |  |  | AUTHOY; Sadman | 72h | 192 | Low |
| 27 | 2.2.1 | Conduct User Surveys | 1d | 2024-07-25 | 2024-07-25 |  | 204d | 0d |  | AUTHOY | 8h | 19.2 | High |
| 28 | 2.2.2 | Analyze Survey Results | 1d | 2024-07-26 | 2024-07-26 | 27 | 204d | 0d |  | Sadman | 8h | 24 | Low |
| 29 | 2.2.3 | Identify User Pain Points | 1d | 2024-07-29 | 2024-07-29 | 28 | 204d |  |  | AUTHOY | 8h | 19.2 | High |
| 30 | 2.3 | **Market Trends Analysis** | 4d | 2024-07-30 | 2024-08-02 |  |  |  |  | TAWHID; AUTHOY; Zahid | 128h | 315.2 | Medium |
| 31 | 2.3.1 | Research Industry Trends | 1d | 2024-07-30 | 2024-07-30 |  | 201d | 0d |  | TAWHID | 8h | 16 | Medium |
| 32 | 2.3.2 | Analyze Technological Trends | 1d | 2024-07-31 | 2024-07-31 | 31 | 201d | 0d |  | AUTHOY | 8h | 19.2 | Medium |
| 33 | 2.3.3 | Document Findings | 1d | 2024-08-01 | 2024-08-01 | 32 | 201d |  |  | AUTHOY; Zahid | 16h | 43.2 | Low |
| 34 | 3 | **Website Design** | 25d | 2024-08-05 | 2024-09-06 |  |  |  |  | TAWHID; AUTHOY; Sadman; Zahid | 1536h | 4,105.6 | High |
| 35 | 3.1 | **Requirements Specification** | 5d | 2024-08-05 | 2024-08-09 |  |  |  |  | Sadman; Zahid | 128h | 384 | Low |
| 36 | 3.1.1 | Detail Functional Requirements | 2d | 2024-08-05 | 2024-08-06 |  | 196d | 0d | finish no earlier than 2024-08-06 | Sadman; Zahid | 32h | 96 | High |
| 37 | 3.1.2 | Detail Non-Functional Requirements | 1d | 2024-08-07 | 2024-08-07 | 36 | 196d | 0d |  | Zahid | 8h | 24 | High |
| 38 | 3.1.3 | Create Use Cases | 1d | 2024-08-08 | 2024-08-08 | 37 | 196d |  |  | Zahid | 8h | 24 | Low |
| 39 | 3.2 | **Wireframing** | 7d | 2024-08-09 | 2024-08-19 |  |  |  |  | AUTHOY; Sadman; Zahid | 224h | 619.2 | High |
| 40 | 3.2.1 | Homepage Design | 1d | 2024-08-09 | 2024-08-09 |  | 189d | 0d |  | Sadman | 8h | 24 | Low |
| 41 | 3.2.2 | Property Listing Page | 1d | 2024-08-12 | 2024-08-12 | 40 | 189d | 0d |  | Zahid | 8h | 24 | High |
| 42 | 3.2.3 | Property Detail Page | 3d | 2024-08-13 | 2024-08-15 | 41 | 189d | 0d | finish no earlier than 2024-08-15 | AUTHOY | 24h | 57.6 | Medium |
| 43 | 3.2.4 | User Dashboard | 1d | 2024-08-16 | 2024-08-16 | 42 | 189d | 0d |  | Zahid | 8h | 24 | Medium |
| 44 | 3.2.5 | Contact Page | 1d | 2024-08-19 | 2024-08-19 | 43 | 189d |  |  | AUTHOY | 8h | 19.2 | Medium |
| 45 | 3.3 | **Prototyping** | 5d | 2024-08-20 | 2024-08-26 |  |  |  |  | TAWHID; AUTHOY | 168h | 388.8 | Low |
| 46 | 3.3.1 | Create Low-Fidelity Prototypes | 1d | 2024-08-20 | 2024-08-20 |  | 184d | 0d |  | TAWHID | 8h | 16 | High |
| 47 | 3.3.2 | Create High-Fidelity Prototypes | 1d | 2024-08-21 | 2024-08-21 | 46 | 184d | 0d |  | AUTHOY | 8h | 19.2 | Low |
| 48 | 3.3.3 | Prototype Review Sessions | 3d | 2024-08-22 | 2024-08-26 | 47 | 184d |  | finish no earlier than 2024-08-26 | TAWHID; AUTHOY; Sadman | 72h | 177.6 | High |
| 49 | 3.4 | **UI/UX Design** | 6d | 2024-08-27 | 2024-09-03 |  |  |  |  | Sadman; Zahid | 144h | 432 | Low |
| 50 | 3.4.1 | User Interface Design | 4d | 2024-08-27 | 2024-08-30 |  | 178d | 0d | finish no earlier than 2024-08-30 | Zahid | 32h | 96 | High |
| 51 | 3.4.2 | User Experience Design | 1d | 2024-09-02 | 2024-09-02 | 50 | 178d | 0d |  | Zahid | 8h | 24 | Medium |
| 52 | 3.4.3 | Usability Testing | 1d | 2024-09-03 | 2024-09-03 | 51 | 178d |  |  | Sadman | 8h | 24 | Medium |

| ID | WBS | Task | Duration | Start | Finish | Predecessors | Total slack | Free slack | Constraint | Resources | Work | Cost | Risk Level |
| --- | --- | --- | --- | --- | --- | --- | --- | --- | --- | --- | --- | --- | --- |
| 53 | 3.5 | **Design Approval** | 2d | 2024-09-04 | 2024-09-05 |  |  |  |  | AUTHOY; Sadman; Zahid | 72h | 201.6 | Medium |
| 54 | 3.5.1 | Internal Review | 1d | 2024-09-04 | 2024-09-04 |  | 176d | 0d |  | Zahid | 8h | 24 | Low |
| 55 | 3.5.2 | Stakeholder Review | 1d | 2024-09-05 | 2024-09-05 | 54 | 176d |  |  | Sadman | 8h | 24 | High |
| 56 | 3.5.3 | Final Approval | 1d | 2024-09-05 | 2024-09-05 |  | 176d |  | start no earlier than 2024-09-05 | AUTHOY | 8h | 19.2 | Low |
| 57 | 4 | **Backend Development** | 50d | 2024-09-09 | 2024-11-15 |  |  |  |  | TAWHID; AUTHOY; Sadman; Zahid | 3600h | 9,496 | High |
| 58 | 4.1 | **Database Design** | 10d | 2024-09-09 | 2024-09-20 |  |  |  |  | Sadman; Zahid | 240h | 696 | Low |
| 59 | 4.1.1 | Schema Design | 5d | 2024-09-09 | 2024-09-13 |  | 165d | 0d | finish no earlier than 2024-09-13 | AUTHOY | 40h | 96 | High |
| 60 | 4.1.2 | Database Setup | 3d | 2024-09-16 | 2024-09-18 | 59 | 165d | 0d | finish no earlier than 2024-09-18 | Zahid | 24h | 72 | Medium |
| 61 | 4.1.3 | Data Modeling | 2d | 2024-09-19 | 2024-09-20 | 60 | 165d |  | start no earlier than 2024-09-19 | Zahid | 16h | 48 | Medium |
| 62 | 4.2 | **API Development** | 20d | 2024-09-23 | 2024-10-18 |  |  |  |  | TAWHID; AUTHOY; Sadman; Zahid | 800h | 2,064 | Medium |
| 63 | 4.2.1 | User Authentication | 5d | 2024-09-23 | 2024-09-27 |  | 145d | 0d | start no earlier than 2024-09-23 | AUTHOY | 40h | 96 | Low |
| 64 | 4.2.2 | Property Management | 7d | 2024-09-30 | 2024-10-08 | 63 | 145d | 0d | finish no earlier than 2024-10-08 | TAWHID | 56h | 112 | High |
| 65 | 4.2.3 | Booking System | 8d | 2024-10-09 | 2024-10-18 | 64 | 145d |  | start no earlier than 2024-10-09 | Zahid | 64h | 192 | Low |
| 66 | 4.3 | **Server Setup** | 20d | 2024-10-21 | 2024-11-15 |  |  |  |  | TAWHID; AUTHOY; Sadman; Zahid | 960h | 2,576 | High |
| 67 | 4.3.1 | Server Configuration | 5d | 2024-10-21 | 2024-10-25 |  | 125d | 0d | finish no earlier than 2024-10-25 | Zahid | 40h | 120 | Medium |
| 68 | 4.3.2 | Hosting Setup | 10d | 2024-10-28 | 2024-11-08 | 67 | 125d | 0d | start no earlier than 2024-10-28 | AUTHOY; Sadman; Zahid | 240h | 672 | Medium |
| 69 | 4.3.3 | Server Security Configuration | 5d | 2024-11-11 | 2024-11-15 | 68 | 125d |  | start no earlier than 2024-11-11 | Zahid | 40h | 120 | Medium |
| 70 | 5 | **Frontend Development** | 45d | 2024-11-18 | 2025-01-17 |  |  |  |  | TAWHID; AUTHOY; Sadman; Zahid | 2808h | 7,321.6 | Low |
| 71 | 5.1 | **HTML/CSS Development** | 15d | 2024-11-18 | 2024-12-06 |  |  |  |  | TAWHID; AUTHOY; Sadman | 480h | 1,200 | High |
| 72 | 5.1.1 | Layout Design | 10d | 2024-11-18 | 2024-11-29 |  | 110d | 0d | finish no earlier than 2024-11-29 | AUTHOY | 80h | 192 | Low |
| 73 | 5.1.2 | Styling and Themes | 5d | 2024-12-02 | 2024-12-06 | 72 | 110d |  | start no earlier than 2024-12-02 | Sadman | 40h | 120 | High |
| 74 | 5.2 | **JavaScript Development** | 15d | 2024-12-09 | 2024-12-27 |  |  |  |  | TAWHID; Sadman; Zahid | 480h | 1,291.2 | Low |
| 75 | 5.2.1 | User Interactions | 9d | 2024-12-09 | 2024-12-19 |  | 95d | 0d | start no earlier than 2024-12-09 | Zahid | 72h | 216 | High |
| 76 | 5.2.2 | API Integration | 6d | 2024-12-20 | 2024-12-27 | 75 | 95d |  |  | AUTHOY | 48h | 115.2 | Medium |

| ID | WBS | Task | Duration | Start | Finish | Predecessors | Total slack | Free slack | Constraint | Resources | Work | Cost | Risk Level |
| --- | --- | --- | --- | --- | --- | --- | --- | --- | --- | --- | --- | --- | --- |
| 77 | 5.3 | **Responsive Design** | 10d | 2024-12-30 | 2025-01-10 |  |  |  |  | TAWHID; Sadman | 240h | 616 | Medium |
| 78 | 5.3.1 | Mobile Optimization | 5d | 2024-12-30 | 2025-01-03 |  | 85d | 0d | finish no earlier than 2025-01-03 | Sadman | 40h | 120 | Medium |
| 79 | 5.3.2 | Cross-Browser Compatibility | 5d | 2025-01-06 | 2025-01-10 | 78 | 85d |  | start no earlier than 2025-01-06 | AUTHOY | 40h | 96 | Low |
| 80 | 5.4 | **Frontend Framework Integration** | 5d | 2025-01-13 | 2025-01-17 |  |  |  |  | AUTHOY; Sadman; Zahid | 168h | 470.4 | High |
| 81 | 5.4.1 | Framework Selection (eg, React, Angular) | 2d | 2025-01-13 | 2025-01-14 |  | 80d | 0d | finish no earlier than 2025-01-14 | Zahid | 16h | 48 | Low |
| 82 | 5.4.2 | Component Development | 2d | 2025-01-15 | 2025-01-16 | 81 | 80d | 0d | finish no earlier than 2025-01-16 | AUTHOY | 16h | 38.4 | High |
| 83 | 5.4.3 | Integration Testing | 1d | 2025-01-17 | 2025-01-17 | 82 | 80d |  |  | Sadman; Zahid | 16h | 48 | High |
| 84 | 6 | **Testing** | 25d | 2025-01-20 | 2025-02-21 |  |  |  |  | TAWHID; AUTHOY; Sadman; Zahid | 1440h | 3,846.4 | Low |
| 85 | 6.1 | **Unit Testing** | 5d | 2025-01-20 | 2025-01-24 |  |  |  |  | Sadman | 80h | 240 | High |
| 86 | 6.1.1 | Develop Unit Test Cases | 3d | 2025-01-20 | 2025-01-22 |  | 75d | 0d | start no earlier than 2025-01-20 | Sadman | 24h | 72 | Low |
| 87 | 6.1.2 | Execute Unit Tests | 1d | 2025-01-23 | 2025-01-23 | 86 | 75d | 0d |  | Zahid | 8h | 24 | High |
| 88 | 6.1.3 | Fix Issues | 1d | 2025-01-24 | 2025-01-24 | 87 | 75d |  |  | Zahid | 8h | 24 | Medium |
| 89 | 6.2 | **Integration Testing** | 5d | 2025-01-27 | 2025-01-31 |  |  |  |  | TAWHID; AUTHOY; Sadman; Zahid | 200h | 523.2 | Medium |
| 90 | 6.2.1 | Develop Integration Test Cases | 3d | 2025-01-27 | 2025-01-29 |  | 70d | 0d | finish no earlier than 2025-01-29 | Sadman | 24h | 72 | Medium |
| 91 | 6.2.2 | Execute Integration Tests | 1d | 2025-01-30 | 2025-01-30 | 90 | 70d | 0d |  | TAWHID | 8h | 16 | Low |
| 92 | 6.2.3 | Fix Issues | 1d | 2025-01-31 | 2025-01-31 | 91 | 70d |  |  | AUTHOY | 8h | 19.2 | High |
| 93 | 6.3 | **System Testing** | 6d | 2025-02-03 | 2025-02-09 |  |  |  |  | Zahid | 112h | 336 | Low |
| 94 | 6.3.1 | Develop System Test Cases | 3d | 2025-02-03 | 2025-02-05 |  | 65d | 0d | start no earlier than 2025-02-03 | Sadman; Zahid | 48h | 144 | High |
| 95 | 6.3.2 | Execute System Tests | 1d | 2025-02-06 | 2025-02-06 | 94 | 65d | 0d |  | Sadman | 8h | 24 | Low |
| 96 | 6.3.3 | Fix Issues | 1d | 2025-02-07 | 2025-02-07 | 95 | 65d |  |  | Zahid | 8h | 24 | High |
| 97 | 6.4 | **User Acceptance Testing (UAT)** | 5d | 2025-02-10 | 2025-02-14 |  |  |  |  | AUTHOY; Sadman; Zahid | 160h | 456 | Medium |
| 98 | 6.4.1 | Develop UAT Test Cases | 2d | 2025-02-10 | 2025-02-11 |  | 60d | 0d | start no earlier than 2025-02-10 | Zahid | 16h | 48 | Medium |
| 99 | 6.4.2 | Conduct UAT Sessions | 1d | 2025-02-12 | 2025-02-12 | 98 | 60d | 0d |  | Zahid | 8h | 24 | Medium |
| 100 | 6.4.3 | Gather Feedback | 2d | 2025-02-13 | 2025-02-14 | 99 | 60d |  | start no earlier than 2025-02-13 | Zahid | 16h | 48 | Low |

| ID | WBS | Task | Duration | Start | Finish | Predecessors | Total slack | Free slack | Constraint | Resources | Work | Cost | Risk Level |
| --- | --- | --- | --- | --- | --- | --- | --- | --- | --- | --- | --- | --- | --- |
| 101 | 6.5 | **Bug Fixing and Optimization** | 6d | 2025-02-15 | 2025-02-21 |  |  |  |  | AUTHOY | 88h | 211.2 | High |
| 102 | 6.5.1 | Log Bugs | 1d | 2025-02-17 | 2025-02-17 |  | 55d | 0d |  | AUTHOY | 8h | 19.2 | Low |
| 103 | 6.5.2 | Prioritize Bugs | 1d | 2025-02-18 | 2025-02-18 | 102 | 55d | 0d |  | AUTHOY | 8h | 19.2 | High |
| 104 | 6.5.3 | Fix Bugs | 1d | 2025-02-19 | 2025-02-19 | 103 | 55d | 0d |  | AUTHOY | 8h | 19.2 | Low |
| 105 | 6.5.4 | Performance Optimization | 2d | 2025-02-20 | 2025-02-21 | 104 | 55d |  | start no earlier than 2025-02-20 | AUTHOY | 16h | 38.4 | High |
| 106 | 7 | **Deployment** | 20d | 2025-02-24 | 2025-03-21 |  |  |  |  | TAWHID; AUTHOY; Sadman; Zahid | 1184h | 3,140.8 | Medium |
| 107 | 7.1 | **Final Review and Approval** | 5d | 2025-02-24 | 2025-02-28 |  |  |  |  | Zahid | 80h | 240 | Medium |
| 108 | 7.1.1 | Internal Review | 4d | 2025-02-24 | 2025-02-27 |  | 50d | 0d | start no earlier than 2025-02-24 | Zahid | 32h | 96 | Medium |
| 109 | 7.1.2 | Stakeholder Approval | 1d | 2025-02-28 | 2025-02-28 | 108 | 50d |  |  | Sadman | 8h | 24 | Low |
| 110 | 7.2 | **Production Server Setup** | 5d | 2025-03-03 | 2025-03-07 |  |  |  |  | AUTHOY; TAWHID; Sadman; Zahid | 192h | 504 | High |
| 111 | 7.2.1 | Configure Production Server | 3d | 2025-03-03 | 2025-03-05 |  | 46d | 1d | start no earlier than 2025-03-03 | Sadman | 24h | 72 | Low |
| 112 | 7.2.2 | Security Audit | 1d | 2025-03-07 | 2025-03-07 | 111 | 45d |  | finish no earlier than 2025-03-07 | TAWHID | 8h | 16 | High |
| 113 | 7.3 | **Data Migration** | 5d | 2025-03-10 | 2025-03-14 |  |  |  |  | AUTHOY | 144h | 382.4 | Medium |
| 114 | 7.3.1 | Plan Data Migration | 2d | 2025-03-10 | 2025-03-11 |  | 40d | 0d | start no earlier than 2025-03-10 | Sadman; Zahid | 32h | 96 | Medium |
| 115 | 7.3.2 | Execute Data Migration | 2d | 2025-03-12 | 2025-03-13 | 114 | 40d | 0d | start no earlier than 2025-03-12 | TAWHID; AUTHOY; Sadman; Zahid | 64h | 166.4 | Medium |
| 116 | 7.3.3 | Validate Data Migration | 1d | 2025-03-14 | 2025-03-14 | 115 | 40d |  |  | Sadman | 8h | 24 | Low |
| 117 | 7.4 | **Website Launch** | 3d | 2025-03-17 | 2025-03-19 |  |  |  |  | Sadman | 48h | 144 | High |
| 118 | 7.4.1 | Launch Preparation | 1d | 2025-03-17 | 2025-03-17 |  | 37d | 0d |  | Zahid | 8h | 24 | Low |
| 119 | 7.4.2 | Go-Live | 2d | 2025-03-18 | 2025-03-19 | 118 | 37d |  |  | Zahid | 16h | 48 | High |
| 120 | 7.5 | **Post-Launch Support** | 2d | 2025-03-20 | 2025-03-21 |  |  |  |  | TAWHID; AUTHOY; Sadman; Zahid | 80h | 206.4 | Low |
| 121 | 7.5.1 | Monitor System | 1d | 2025-03-20 | 2025-03-20 |  | 35d | 0d |  | Sadman | 8h | 24 | High |
| 122 | 7.5.2 | Address Immediate Issues | 1d | 2025-03-21 | 2025-03-21 | 121 | 35d |  |  | TAWHID | 8h | 16 | Medium |
| 123 | 8 | **Marketing and User Acquisition** | 25d | 2025-03-24 | 2025-04-25 |  |  |  |  | AUTHOY | 832h | 2,268.8 | Medium |
| 124 | 8.1 | **Marketing Strategy** | 10d | 2025-03-24 | 2025-04-04 |  |  |  |  | Zahid | 200h | 600 | Medium |
| 125 | 8.1.1 | Define Target Audience | 5d | 2025-03-24 | 2025-03-28 |  | 25d | 0d | finish no earlier than 2025-03-28 | Sadman; Zahid | 80h | 240 | Low |
| 126 | 8.1.2 | Develop Marketing Plan | 5d | 2025-03-31 | 2025-04-04 | 125 | 25d |  | start no earlier than 2025-03-31 | Sadman | 40h | 120 | High |

| ID | WBS | Task | Duration | Start | Finish | Predecessors | Total slack | Free slack | Constraint | Resources | Work | Cost | Risk Level |
| --- | --- | --- | --- | --- | --- | --- | --- | --- | --- | --- | --- | --- | --- |
| 127 | 8.2 | **Social Media Campaigns** | 5d | 2025-04-07 | 2025-04-11 |  |  |  |  | Zahid | 128h | 369.6 | Low |
| 128 | 8.2.1 | Create Content | 2d | 2025-04-07 | 2025-04-08 |  | 20d | 0d | start no earlier than 2025-04-07 | AUTHOY; Sadman; Zahid | 48h | 134.4 | High |
| 129 | 8.2.2 | Schedule Posts | 1d | 2025-04-09 | 2025-04-09 | 128 | 20d | 0d |  | AUTHOY | 8h | 19.2 | High |
| 130 | 8.2.3 | Monitor Engagement | 2d | 2025-04-10 | 2025-04-11 | 129 | 20d |  | start no earlier than 2025-04-10 | Sadman; Zahid | 32h | 96 | Low |
| 131 | 8.3 | **SEO Optimization** | 5d | 2025-04-14 | 2025-04-18 |  |  |  |  | TAWHID; AUTHOY; Sadman; Zahid | 200h | 536 | High |
| 132 | 8.3.1 | Keyword Research | 3d | 2025-04-14 | 2025-04-16 |  | 15d | 0d | start no earlier than 2025-04-14 | Sadman | 24h | 72 | Low |
| 133 | 8.3.2 | On-Page Optimization | 1d | 2025-04-17 | 2025-04-17 | 132 | 15d | 0d |  | Sadman | 8h | 24 | High |
| 134 | 8.3.3 | Off-Page Optimization | 1d | 2025-04-18 | 2025-04-18 | 133 | 15d |  |  | Zahid | 8h | 24 | Medium |
| 135 | 8.4 | **User Feedback Collection** | 5d | 2025-04-21 | 2025-04-25 |  |  |  |  | Zahid | 104h | 283.2 | Medium |
| 136 | 8.4.1 | Develop Feedback Mechanisms | 1d | 2025-04-21 | 2025-04-21 |  | 10d | 0d |  | TAWHID; AUTHOY; Sadman; Zahid | 32h | 83.2 | Medium |
| 137 | 8.4.2 | Collect User Feedback | 2d | 2025-04-22 | 2025-04-23 | 136 | 10d | 0d |  | Sadman | 16h | 48 | Low |
| 138 | 8.4.3 | Analyze Feedback | 2d | 2025-04-24 | 2025-04-25 | 137 | 10d |  | start no earlier than 2025-04-24 | TAWHID | 16h | 32 | High |
| 139 | 9 | **Maintenance and Updates** | 10d | 2025-04-28 | 2025-05-09 |  |  |  |  | AUTHOY | 392h | 1,054.4 | Low |
| 140 | 9.1 | **Regular Updates** | 3d | 2025-04-28 | 2025-04-30 |  |  |  |  | Zahid | 64h | 192 | High |
| 141 | 9.1.1 | Schedule Updates | 2d | 2025-04-28 | 2025-04-29 |  | 7d | 0d | start no earlier than 2025-04-28 | Sadman; Zahid | 32h | 96 | Low |
| 142 | 9.1.2 | Implement Updates | 1d | 2025-04-30 | 2025-04-30 | 141 | 7d |  |  | Sadman | 8h | 24 | High |
| 143 | 9.2 | **Feature Enhancements** | 2d | 2025-05-01 | 2025-05-02 |  |  |  |  | Zahid | 48h | 139.2 | Medium |
| 144 | 9.2.1 | Identify New Features | 1d | 2025-05-01 | 2025-05-01 |  | 5d | 0d |  | AUTHOY; Sadman; Zahid | 24h | 67.2 | Medium |
| 145 | 9.2.2 | Develop Features | 1d | 2025-05-02 | 2025-05-02 | 144 | 5d |  |  | Sadman | 8h | 24 | Medium |
| 146 | 9.3 | **Performance Monitoring** | 2d | 2025-05-05 | 2025-05-06 |  |  |  |  | TAWHID; AUTHOY; Sadman; Zahid | 80h | 214.4 | Low |
| 147 | 9.3.1 | Monitor Website Performance | 1d | 2025-05-05 | 2025-05-05 |  | 3d | 0d |  | Zahid | 8h | 24 | High |
| 148 | 9.3.2 | Optimize Performance | 1d | 2025-05-06 | 2025-05-06 | 147 | 3d |  |  | Sadman | 8h | 24 | Low |
| 149 | 9.4 | **User Support** | 3d | 2025-05-07 | 2025-05-09 |  |  |  |  | TAWHID; AUTHOY; Sadman; Zahid | 120h | 316.8 | High |
| 150 | 9.4.1 | Setup Support Channels | 1d | 2025-05-07 | 2025-05-07 |  | 0d |  |  | AUTHOY | 8h | 19.2 | Low |
| 151 | 9.4.2 | Respond to User Queries | 1d | 2025-05-08 | 2025-05-08 | 150 | 0d |  |  | Sadman | 8h | 24 | High |
| 152 | 9.4.3 | Resolve Issues | 1d | 2025-05-09 | 2025-05-09 | 151 | 0d |  |  | Zahid | 8h | 24 | Medium |
